# Insiths_07.12.21

How a schedule from MS Project changed from version to version. A marks actual dates.

## Version 1 (saved 2021-11-07, file Cronograma_Insiths_07.12.21.mpp)

Note of the change: GERENCIA DE PROJETOS

| ID | WBS | Task | Duration | Start | Finish | Predecessors | Complete | Total float | Constraint |
| --- | --- | --- | --- | --- | --- | --- | --- | --- | --- |
| 1 | 1 | **INSIGHTS** | 220d | 2021-09-10 09:00 A | 2022-07-12 19:40 |  | 20% | 0d |  |
| 2 | 1.1 | **Prospecção** | 15d | 2021-09-10 09:00 A | 2021-09-30 23:30 A |  | 100% |  |  |
| 3 |  | Pedido do Serviço/produto | 16.54h | 2021-09-10 09:00 A | 2021-09-14 09:32 A |  | 100% |  |  |
| 4 | 1.1.2 | **PTEC** | 7d | 2021-09-14 19:00 A | 2021-09-24 09:00 A |  | 100% |  |  |
| 5 |  | Estudar dominio de aplicação | 6h | 2021-09-14 19:00 A | 2021-09-21 20:00 A | 3 | 100% |  |  |
| 6 |  | Reuninir com o cliente | 1h | 2021-09-16 22:30 A | 2021-09-16 23:30 A | 5 | 100% |  |  |
| 7 |  | Redigir PTEC | 4h | 2021-09-21 19:00 A | 2021-09-23 22:30 A | 6 | 100% |  |  |
| 8 |  | Revisar PTEC | 2h | 2021-09-23 21:30 A | 2021-09-23 23:30 A | 7 | 100% |  |  |
| 9 |  | Aprovar PTEC | 0h | 2021-09-24 09:00 A | 2021-09-24 09:00 A | 8 | 100% |  |  |
| 10 | 1.1.3 | **Estimativa preliminar de Tamanho** | 0d | 2021-09-28 19:00 A | 2021-09-28 20:18 A |  | 100% |  |  |
| 11 |  | Estimar Tamanho do projeto | 1h | 2021-09-28 19:00 A | 2021-09-28 20:00 A | 9 | 100% |  |  |
| 12 |  | Revisar Estimativa Prel. Tam | 0.3h | 2021-09-28 20:00 A | 2021-09-28 20:18 A | 11 | 100% |  |  |
| 13 | 1.1.4 | **Est. Prel. Cronograma/ Orçamento Preliminar** | 2d | 2021-09-28 20:00 A | 2021-09-30 23:30 A |  | 100% |  |  |
| 14 |  | Elaborar Cronograma/ Orçamento Preliminar | 4h | 2021-09-28 20:00 A | 2021-09-30 23:30 A | 11 | 100% |  |  |
| 15 |  | Revisar estimativas de Cronograma/ Orçamento Prel. | 0.5h | 2021-09-30 21:30 A | 2021-09-30 22:00 A | 14 | 100% |  |  |
| 16 | 1.2 | **Analise** | 28d | 2021-09-10 09:00 A | 2021-10-19 20:02 A |  | 100% |  |  |
| 17 | 1.2.1 | **Documentos de Requisitos** | 23d | 2021-09-10 09:00 A | 2021-10-12 20:00 A |  | 100% |  |  |
| 18 |  | Reuninir com o cliente | 1h | 2021-09-30 22:30 A | 2021-09-30 23:30 A | 15 | 100% |  |  |
| 19 |  | Elaborar DRE | 8h | 2021-10-07 21:30 A | 2021-10-09 06:00 A | 18 | 100% |  |  |
| 20 |  | Revisar DRE | 1h | 2021-10-12 19:00 A | 2021-10-12 20:00 A | 19 | 100% |  |  |
| 21 |  | Submeter DRE para aprovação do cliente | 0h | 2021-09-10 09:00 A | 2021-09-10 09:00 A |  | 100% |  |  |
| 22 | 1.2.2 | **Matriz RB** | 5d | 2021-10-12 21:00 A | 2021-10-19 20:02 A |  | 100% |  |  |
| 23 |  | Elaborar MRB | 7.5h | 2021-10-12 21:00 A | 2021-10-16 04:29 A | 20 | 100% |  |  |
| 24 |  | Revisar MRB | 0.3h | 2021-10-19 19:44 A | 2021-10-19 20:02 A | 23 | 100% |  |  |
| 25 | 1.3 | **Planejamento** | 3d | 2021-10-12 21:00 A | 2021-10-16 16:08 A |  | 100% |  |  |
| 26 | 1.3.1 | **Plano Gerenciamento do Projeto** | 3d | 2021-10-12 21:00 A | 2021-10-16 13:08 A |  | 100% |  |  |
| 27 |  | Definição do escopo | 1.5h | 2021-10-12 21:00 A | 2021-10-14 22:00 A | 20 | 100% |  |  |
| 28 |  | Cronograma definitivo | 2h | 2021-10-14 21:38 A | 2021-10-16 09:08 A | 27 | 100% |  |  |
| 29 |  | Orçamento definitivo | 1h | 2021-10-16 09:08 A | 2021-10-16 10:08 A | 28 | 100% |  |  |
| 30 |  | Analise de riscos | 3h | 2021-10-16 09:08 A | 2021-10-16 13:08 A | 28 | 100% |  |  |
| 31 | 1.3.2 | **Plano de Trabalho** | 0d | 2021-10-16 10:38 A | 2021-10-16 16:08 A |  | 100% |  |  |
| 32 |  | Plano Pojeto (UML) | 2h | 2021-10-16 10:38 A | 2021-10-16 13:38 A | 29 | 100% |  |  |
| 33 |  | Plano de Desenvolvimento | 1h | 2021-10-16 14:38 A | 2021-10-16 15:38 A | 32 | 100% |  |  |
| 34 |  | Plano de Teste | 0.5h | 2021-10-16 15:38 A | 2021-10-16 16:08 A | 33 | 100% |  |  |
| 35 | 1.4 | **Projeto** | 5d | 2021-10-19 19:44 A | 2021-10-26 19:02 A |  | 100% |  |  |
| 36 | 1.4.1 | **Diagrama de classe** | 0d | 2021-10-19 19:44 A | 2021-10-19 21:02 A |  | 100% |  |  |
| 37 |  | Elaborar diagrama de classe | 1h | 2021-10-19 19:44 A | 2021-10-19 20:44 A | 23 | 100% |  |  |
| 38 |  | Revisar diagrama de classe | 0.3h | 2021-10-19 20:44 A | 2021-10-19 21:02 A | 37 | 100% |  |  |
| 39 | 1.4.2 | **Diagrama de contexto** | 2d | 2021-10-19 20:44 A | 2021-10-21 21:32 A |  | 100% |  |  |
| 40 |  | Elaborar diagrama de contexto | 1h | 2021-10-19 20:44 A | 2021-10-21 21:14 A | 37 | 100% |  |  |
| 41 |  | Revisar diagrama de contexto | 0.3h | 2021-10-21 21:14 A | 2021-10-21 21:32 A | 40 | 100% |  |  |
| 42 | 1.4.3 | **Dicionario de Dados** | 0.12d | 2021-10-21 21:14 A | 2021-10-22 10:00 A |  | 100% |  |  |
| 43 |  | Criar Dicionarios | 1h | 2021-10-21 21:14 A | 2021-10-21 22:14 A | 40 | 100% |  |  |
| 44 |  | Revisar Dicionário | 0.3h | 2021-10-21 22:14 A | 2021-10-21 22:32 A | 43 | 100% |  |  |
| 45 |  | Atualizar MRB | 1h | 2021-10-22 09:00 A | 2021-10-22 10:00 A | 43 | 100% |  |  |
| 46 | 1.4.4 | **Modelo Entidade Relacionamento** | 3d | 2021-10-21 22:14 A | 2021-10-26 19:02 A |  | 100% |  |  |
| 47 |  | Elaborar MER | 1h | 2021-10-21 22:14 A | 2021-10-21 23:14 A | 43 | 100% |  |  |
| 48 |  | Revisar MER | 0.3h | 2021-10-21 23:14 A | 2021-10-26 19:02 A | 47 | 100% |  |  |
| 49 | 1.5 | **Desenvolvimento** | 72d | 2021-10-26 19:00 A | 2022-02-01 19:10 |  | 10% | 115d |  |
| 50 | 1.5.1 | **Release 01** | 25d | 2021-10-26 19:00 A | 2021-11-30 21:00 A |  | 100% |  |  |
| 51 | 1.5.1.1 | **Implementar RFC01- Manter Cliente** | 10d | 2021-10-26 19:00 A | 2021-11-09 21:00 A |  | 100% |  |  |
| 52 |  | [RFS01] Inserir Cliente | 5h | 2021-10-26 19:00 A | 2021-10-28 23:30 A | 45 | 100% |  |  |
| 53 |  | [RFS02] Consultar Cliente | 5h | 2021-10-28 22:30 A | 2021-11-04 22:30 A | 52 | 100% |  |  |
| 54 |  | [RFS03] Editar Cliente | 4h | 2021-11-04 21:30 A | 2021-11-09 21:00 A | 53 | 100% |  |  |
| 55 |  | [RFS04] Remover Cliente | 4h | 2021-10-28 22:30 A | 2021-11-04 21:30 A | 52 | 100% |  |  |
| 56 | 1.5.1.2 | **Implementar RFC04 - Manter Assessor** | 18d | 2021-11-04 21:30 A | 2021-11-30 20:00 A |  | 100% |  |  |
| 57 |  | [RFS10] Inserir Assessor | 5h | 2021-11-04 21:30 A | 2021-11-11 21:30 A | 55 | 100% |  |  |
| 58 |  | [RFS11] Consultar Assessor | 5h | 2021-11-11 21:30 A | 2021-11-18 21:30 A | 57 | 100% |  |  |
| 59 |  | [RFS12] Editar Assessor | 4h | 2021-11-18 21:30 A | 2021-11-23 21:00 A | 58 | 100% |  |  |
| 60 |  | [RFS13] Remover Assessor | 4h | 2021-11-23 21:00 A | 2021-11-30 20:00 A | 59 | 100% |  |  |
| 61 | 1.5.1.3 | **Teste** | 18d | 2021-11-04 21:30 A | 2021-11-30 21:00 A |  | 100% |  |  |
| 62 |  | Testar RFC01 - Manter Cliente | 1h | 2021-11-04 21:30 A | 2021-11-04 22:30 A | 55 | 100% |  |  |
| 63 |  | Testar RFC02 - Manter Consultor | 1h | 2021-11-30 20:00 A | 2021-11-30 21:00 A | 60 | 100% |  |  |
| 64 | 1.5.2 | **Release 02** | 8d | 2021-11-30 09:00 A | 2021-12-07 20:00 A |  | 100% |  |  |
| 65 | 1.5.2.1 | **Implementar RFC03 - Manter Carteira** | 8d | 2021-11-30 09:00 A | 2021-12-07 20:00 A |  | 100% |  |  |
| 66 |  | [RFS06] Inserir Carteira de Ativos | 2.6h | 2021-11-30 09:00 A | 2021-11-30 20:36 A | 63 | 100% |  | finish no earlier than 2021-12-04 19:00 |
| 67 |  | [RFS07] Consultar Carteira de Ativos | 2h | 2021-12-04 09:00 A | 2021-12-05 15:30 A | 66 | 100% |  | finish no earlier than 2021-12-05 19:00 |
| 68 |  | [RFS08] Editar Carteira de Ativos | 2h | 2021-12-04 09:00 A | 2021-12-05 11:00 A | 66 | 100% |  |  |
| 69 |  | [RFS09] Remover Carteira de Ativos | 1h | 2021-12-07 19:00 A | 2021-12-07 20:00 A | 67 | 100% |  |  |
| 70 | 1.5.2.2 | **Implementar RFC02 - Consultar Ativo** | 0.38d | 2021-12-04 09:00 A | 2021-12-04 12:00 A |  | 100% |  |  |

| ID | WBS | Task | Duration | Start | Finish | Predecessors | Complete | Total float |
| --- | --- | --- | --- | --- | --- | --- | --- | --- |
| 71 |  | [RF05] Consultar e/ou Selecionar Ativos | 3h | 2021-12-04 09:00 A | 2021-12-04 12:00 A | 63 | 100% |  |
| 72 | 1.5.2.3 | **Teste** | 3d | 2021-12-05 09:00 A | 2021-12-07 19:30 A |  | 100% |  |
| 73 |  | Testar RFC03 - Manter carteira | 0.5h | 2021-12-05 09:00 A | 2021-12-05 09:30 A | 69 | 100% |  |
| 74 |  | Testar RFC - Consultar Ativo | 0.5h | 2021-12-05 09:00 A | 2021-12-07 19:30 A | 71 | 100% |  |
| 75 | 1.5.3 | **Release 03** | 22d | 2021-12-07 19:30 | 2022-01-06 23:00 |  |  | 2d |
| 76 |  | [RFS14] Gerar Relatório Gráfico de cotas dos Ativos | 87.5h | 2021-12-07 19:30 | 2021-12-21 21:00 | 74 |  | 2d |
| 77 |  | [RFS15] Gerar Relatório Gráfico de Retorno acumulado | 103h | 2021-12-21 21:00 | 2022-01-06 22:00 | 76 |  | 2d |
| 78 | 1.5.3.3 | **Teste** | 12d | 2021-12-21 21:00 | 2022-01-06 23:00 |  |  | 133d |
| 79 |  | Testar RFS14 | 22.5h | 2021-12-21 21:00 | 2021-12-23 21:30 | 76 |  | 33d |
| 80 |  | Testar RFS15 | 1h | 2022-01-06 22:00 | 2022-01-06 23:00 | 77 |  | 23d |
| 81 | 1.5.4 | **Release 04** | 5d | 2022-01-06 22:00 | 2022-01-13 22:00 |  |  | 3d |
| 82 |  | [RFS16] Gerar Relatório Retorno Diário | 14h | 2022-01-06 22:00 | 2022-01-08 14:00 | 77 |  | 3d |
| 83 |  | [RFS17] Gerar Relatório Drawdown | 25h | 2022-01-11 19:00 | 2022-01-13 22:00 | 82 |  | 2d |
| 84 | 1.5.4.3 | **Teste** | 0d | 2022-01-11 19:00 | 2022-01-11 21:00 |  |  | 120d |
| 85 |  | Testar RFS16 | 1h | 2022-01-11 19:00 | 2022-01-11 20:00 | 82 |  | 12d |
| 86 |  | Testar RFC17 | 1h | 2022-01-11 20:00 | 2022-01-11 21:00 | 85 |  | 12d |
| 87 | 1.5.5 | **Release 05** | 7d | 2022-01-11 21:00 | 2022-01-20 22:30 |  |  | 7d |
| 88 |  | [RFS18] Gerar Relatório de matriz de correlação | 44.5h | 2022-01-11 21:00 | 2022-01-18 19:30 | 86 |  | 12d |
| 89 |  | [RFS19] Gerar Relatório Fronteira Eficiente | 25h | 2022-01-18 19:30 | 2022-01-20 22:30 | 88 |  | 12d |
| 90 | 1.5.5.3 | **Teste** | 3d | 2022-01-13 22:00 | 2022-01-18 19:30 |  |  | 2d |
| 91 |  | Testar RFS18 | 1h | 2022-01-13 22:00 | 2022-01-13 23:00 | 83 |  | 5d |
| 92 |  | Testar RFS19 | 26.5h | 2022-01-13 23:00 | 2022-01-18 19:30 | 91 |  | 2d |
| 93 | 1.5.6 | **Release 06** | 10d | 2022-01-18 19:30 | 2022-02-01 19:10 |  |  | 3d |
| 94 |  | [RFS20] Gerar Relatório evolução patrimonial | 25h | 2022-01-18 19:30 | 2022-01-20 22:30 | 92 |  | 1d |
| 95 |  | [RFS21] Gerar Relatório de medidas unitárias | 29h | 2022-01-20 22:30 | 2022-01-25 21:30 | 94 |  | 10d |
| 96 | 1.5.6.3 | **Teste** | 8d | 2022-01-20 22:30 | 2022-02-01 19:10 |  |  | 1d |
| 97 |  | Testar RFS20 | 1h | 2022-01-20 22:30 | 2022-01-20 23:30 | 94 |  | 1d |
| 98 |  | Testar RFS21 | 17.17h | 2022-01-22 12:00 | 2022-02-01 19:10 | 97 |  | 0d |
| 99 | 1.6 | **Fechamento** | 8d | 2022-01-25 19:00 | 2022-02-05 12:10 |  |  | 0d |
| 100 | 1.6.1 | **Manual/help** | 3d | 2022-02-01 19:10 | 2022-02-05 12:10 |  |  | 0d |
| 101 |  | Fazer manual | 4h | 2022-02-01 19:10 | 2022-02-03 22:40 | 98 |  | 1d |
| 102 |  | Revisão de Manual | 12.5h | 2022-02-03 22:40 | 2022-02-05 12:10 | 101 |  | 0d |
| 103 | 1.6.2 | **Teste Final** | 5d | 2022-01-25 19:00 | 2022-02-01 19:18 |  |  | 0d |
| 104 |  | Teste sistemico | 24.5h | 2022-01-25 19:00 | 2022-01-27 21:30 | 97 |  | 0d |
| 105 |  | Registro De Bugs | 1h | 2022-01-27 21:30 | 2022-01-27 22:30 | 104 |  | 0d |
| 106 |  | Relatorio de conclusão | 26.81h | 2022-01-27 22:30 | 2022-02-01 19:18 | 105 |  | 0d |
| 107 | 1.7 | **Processos** | 220d | 2021-09-10 09:00 A | 2022-07-12 19:40 |  | 50% | 0d |
| 108 | 1.7.1 | **Monitoramento e Controle** | 220d | 2021-09-10 09:00 A | 2022-07-12 19:40 |  | 50% | 0d |
| 109 |  | Acompanhar Projeto | 3.38h | 2021-09-14 19:00 A | 2022-07-12 19:40 | 106 | 50% | 0d |
| 110 |  | Atas das Reuniões | 0h | 2021-09-10 09:00 A | 2021-09-10 09:00 A |  | 100% |  |
| 111 |  | Registro de comunicação | 0h | 2021-09-10 09:00 A | 2021-09-10 09:00 A |  | 100% |  |
| 112 |  | Doc. Aceite | 0h | 2021-09-10 09:00 | 2021-09-10 09:00 |  |  | 220d |
| 113 | 1.7.1.5 | **Gerência de configuração** | 0d | 2021-09-10 09:00 A | 2021-09-10 09:00 A |  | 100% |  |
| 114 |  | Elaborar Branch | 0h | 2021-09-10 09:00 A | 2021-09-10 09:00 A |  | 100% |  |
| 115 |  | Realizar Merge da Branch x para a Trunk | 0h | 2021-09-10 09:00 A | 2021-09-10 09:00 A |  | 100% |  |
| 116 |  | Backup_Reserva_Drive | 0h | 2021-09-10 09:00 A | 2021-09-10 09:00 A |  | 100% |  |
| 117 | 1.7.2 | **Registro de mudança** | 107d | 2021-09-14 19:00 A | 2022-02-08 20:52 |  | 50% | 110d |
| 118 |  | registrar mudança | 3.75h | 2021-09-14 19:00 A | 2022-02-08 20:52 | 99 | 50% | 110d |

## Version 2 (saved 2021-12-07, file Cronograma_Insiths_06.12.23_Final.mpp)

Note of the change: GERENCIA DE PROJETOS

Last finish stays 2022-07-12. Complete tasks 54 → 78.

Added:

| ID | Task | Duration | Start | Finish | Predecessors | Resources |
| --- | --- | --- | --- | --- | --- | --- |
| 98 | **Release 07** | 2d | 2022-01-18 19:30 A | 2022-01-20 23:00 A |  |  |
| 99 | [RFS22] Recomendar Carteira | 1h | 2022-01-18 19:30 A | 2022-01-18 20:30 A | 91 | Ivan |
| 100 | **Teste** | 0d | 2022-01-20 22:30 A | 2022-01-20 23:00 A |  |  |
| 101 | Testar RFS22 | 0.5h | 2022-01-20 22:30 A | 2022-01-20 23:00 A | 99 | Leonardo |

Removed: 68 [RFS08] Editar Carteira de Ativos

Changed:

| ID | Task | Start | Finish | Duration | Complete | Total float | Predecessors | Other |
| --- | --- | --- | --- | --- | --- | --- | --- | --- |
| 1 | **INSIGHTS** |  |  |  | 20% → 99% |  |  |  |
| 49 | **Desenvolvimento** |  | 2022-02-01 19:10 → 2022-01-22 12:30 A (-10d) | 72d → 65d | 10% → 100% | 115d → none |  |  |
| 66 | [RFS06] Inserir Carteira de Ativos |  | 2021-11-30 20:36 A → 2021-11-30 19:36 A | 2.6h → 1.6h |  |  |  |  |
| 67 | [RFS07] Consultar Carteira de Ativos |  | 2021-12-05 15:30 A → 2021-12-05 14:30 A | 2h → 1h |  |  |  |  |
| 69 | **Implementar RFC02 - Consultar Ativo** |  | 2021-12-04 12:00 A → 2021-12-04 10:00 A | 0.38d → 0.12d |  |  |  |  |
| 70 | [RF05] Consultar e/ou Selecionar Ativos |  | 2021-12-04 12:00 A → 2021-12-04 10:00 A | 3h → 1h |  |  |  |  |
| 74 | **Release 03** | 2021-12-07 19:30 A | 2022-01-06 23:00 → 2022-01-06 22:30 A |  | 0% → 100% | 2d → none |  |  |
| 75 | [RFS14] Gerar Relatório Gráfico de cotas dos Ativos | 2021-12-07 19:30 A | 2021-12-21 21:00 → 2021-12-07 20:30 A (-14d) | 87.5h → 1h | 0% → 100% | 2d → none |  | resources Ivan → Lucas |
| 76 | [RFS15] Gerar Relatório Gráfico de Retorno acumulado | 2021-12-21 21:00 A | 2022-01-06 22:00 → 2021-12-23 21:30 A (-14d) | 103h → 1h | 0% → 100% | 2d → none |  | resources Leonardo → Lucas |
| 77 | **Teste** | 2021-12-21 21:00 A | 2022-01-06 23:00 → 2022-01-06 22:30 A |  | 0% → 100% | 133d → none |  |  |
| 78 | Testar RFS14 | 2021-12-21 21:00 A | 2021-12-23 21:30 → 2021-12-21 21:30 A (-2d) | 22.5h → 0.5h | 0% → 100% | 33d → none |  |  |
| 79 | Testar RFS15 | 2022-01-06 22:00 A | 2022-01-06 23:00 → 2022-01-06 22:30 A | 1h → 0.5h | 0% → 100% | 23d → none |  |  |
| 80 | **Release 04** | 2022-01-06 22:00 A | 2022-01-13 22:00 → 2022-01-11 20:30 A (-2d) | 5d → 3d | 0% → 100% | 3d → none |  |  |
| 81 | [RFS16] Gerar Relatório Retorno Diário | 2022-01-06 22:00 A | 2022-01-08 14:00 → 2022-01-06 23:00 A (-2d) | 14h → 1h | 0% → 100% | 3d → none |  |  |
| 82 | [RFS17] Gerar Relatório Drawdown | 2022-01-11 19:00 A | 2022-01-13 22:00 → 2022-01-11 20:00 A (-2d) | 25h → 1h | 0% → 100% | 2d → none |  |  |
| 83 | **Teste** | 2022-01-11 19:00 A | 2022-01-11 21:00 → 2022-01-11 20:30 A |  | 0% → 100% | 120d → none |  |  |
| 84 | Testar RFS16 | 2022-01-11 19:00 A | 2022-01-11 20:00 → 2022-01-11 19:30 A | 1h → 0.5h | 0% → 100% | 12d → none |  |  |
| 85 | Testar RFC17 | 2022-01-11 20:00 A | 2022-01-11 21:00 → 2022-01-11 20:30 A | 1h → 0.5h | 0% → 100% | 12d → none |  |  |
| 86 | **Release 05** | 2022-01-11 21:00 A | 2022-01-20 22:30 → 2022-01-18 20:30 A (-2d) | 7d → 5d | 0% → 100% | 7d → none |  |  |
| 87 | [RFS18] Gerar Relatório de matriz de correlação | 2022-01-11 21:00 A | 2022-01-18 19:30 → 2022-01-13 21:30 A (-5d) | 44.5h → 1h | 0% → 100% | 12d → none |  |  |
| 88 | [RFS19] Gerar Relatório Fronteira Eficiente | 2022-01-18 19:30 A | 2022-01-20 22:30 → 2022-01-18 20:30 A (-2d) | 25h → 1h | 0% → 100% | 12d → none |  |  |
| 89 | **Teste** | 2022-01-13 22:00 A | 2022-01-18 19:30 → 2022-01-13 23:30 A (-5d) | 3d → 0d | 0% → 100% | 2d → none |  |  |
| 90 | Testar RFS18 | 2022-01-13 22:00 A | 2022-01-13 23:00 → 2022-01-13 22:30 A | 1h → 0.5h | 0% → 100% | 5d → none |  |  |
| 91 | Testar RFS19 | 2022-01-13 23:00 A | 2022-01-18 19:30 → 2022-01-13 23:30 A (-5d) | 26.5h → 0.5h | 0% → 100% | 2d → none |  |  |
| 92 | **Release 06** | 2022-01-18 19:30 A | 2022-02-01 19:10 → 2022-01-22 12:30 A (-10d) | 10d → 3d | 0% → 100% | 3d → none |  |  |
| 93 | [RFS20] Gerar Relatório evolução patrimonial | 2022-01-18 19:30 A | 2022-01-20 22:30 → 2022-01-18 20:30 A (-2d) | 25h → 1h | 0% → 100% | 1d → none |  |  |
| 94 | [RFS21] Gerar Relatório de medidas unitárias | 2022-01-20 22:30 A | 2022-01-25 21:30 → 2022-01-20 23:30 A (-5d) | 29h → 1h | 0% → 100% | 10d → none |  |  |
| 95 | **Teste** | 2022-01-20 22:30 A | 2022-02-01 19:10 → 2022-01-22 12:30 A (-10d) | 8d → 1d | 0% → 100% | 1d → none |  |  |
| 96 | Testar RFS20 | 2022-01-20 22:30 A | 2022-01-20 23:30 → 2022-01-20 23:00 A | 1h → 0.5h | 0% → 100% | 1d → none |  |  |
| 97 | Testar RFS21 | 2022-01-22 12:00 A | 2022-02-01 19:10 → 2022-01-22 12:30 A (-10d) | 17.17h → 0.5h | 0% → 100% | 0d → none |  |  |
| 102 | **Fechamento** | 2022-01-25 19:00 A | 2022-02-05 12:10 A |  | 0% → 100% | 0d → none |  |  |
| 103 | **Manual/help** | 2022-02-01 19:10 A | 2022-02-05 12:10 A |  | 0% → 100% | 0d → none |  |  |
| 104 | Fazer manual | 2022-02-01 19:10 A | 2022-02-03 22:40 A |  | 0% → 100% | 1d → none |  |  |
| 105 | Revisão de Manual | 2022-02-03 22:40 A | 2022-02-05 12:10 A | 12.5h → 1h | 0% → 100% | 0d → none |  |  |
| 106 | **Teste Final** | 2022-01-25 19:00 A | 2022-02-01 19:18 A |  | 0% → 100% | 0d → none |  |  |
| 107 | Teste sistemico | 2022-01-25 19:00 A | 2022-01-27 21:30 → 2022-01-25 21:00 A (-2d) | 24.5h → 2h | 0% → 100% | 0d → none | 96 → 96, 101 |  |
| 108 | Registro De Bugs | 2022-01-27 21:30 A | 2022-01-27 22:30 A |  | 0% → 100% | 0d → none |  |  |
| 109 | Relatorio de conclusão | 2022-01-27 22:30 A | 2022-02-01 19:18 A | 26.81h → 1.31h | 0% → 100% | 0d → none |  |  |
| 110 | **Processos** |  |  |  | 50% → 99% |  |  |  |
| 111 | **Monitoramento e Controle** |  |  |  | 50% → 99% |  |  |  |
| 112 | Acompanhar Projeto |  | 2022-07-12 19:40 A |  | 50% → 100% | 0d → none |  |  |
| 120 | **Registro de mudança** |  | 2022-02-08 20:52 A |  | 50% → 100% | 110d → none |  |  |
| 121 | registrar mudança |  | 2022-02-08 20:52 A |  | 50% → 100% | 110d → none |  |  |
